Schedule from OmniPlan, 2013-08-19 to 2013-12-03.
Project start 2013-08-16

## Resources

| Resource | Group |
| --- | --- |
| Resource 1 | staff |
| Equipment 1 | equipment |
| Material 1 | material |
| Group 1 | group |
| 项目主管 | staff |
| 产品策划 | staff |
| 3D建模师 | staff |
| 3D贴图设计师 | staff |
| 3D研发工程师 | staff |
| 2D平面设计师 | staff |
| 2D动画制作师 | staff |
| 2D研发工程师 | staff |
| 后台工程师 | staff |
| 运维工程师 | staff |

## Schedule

| ID | WBS | Task | Type | Start | Predecessors | Resources | Work |
| --- | --- | --- | --- | --- | --- | --- | --- |
| 1 | 1 | **筹备模块** |  |  |  |  |  |
| 2 | 1.1 | 产品原型及需求确定 |  | 2013-08-19 |  | 项目主管; 产品策划 | 24h |
| 3 | 1.2 | 界面设计 |  | 2013-08-21 | 2 | 2D平面设计师 | 40h |
| 4 | 1.3 | 后台环境搭建 |  | 2013-08-19 |  | 运维工程师 | 40h |
| 5 | 1.4 | 模块相关后台研发 |  | 2013-08-21 | 2 | 后台工程师 | 80h |
| 6 | 1.5 | 同现有系统衔接及前端研发 |  | 2013-09-04 | 5 | 2D研发工程师 | 80h |
| 7 | 1.6 | 第一阶段完成 | milestone |  | 6 |  |  |
| 8 | 2 | **3D场景模块** |  |  |  |  |  |
| 9 | 2.1 | 产品原型及需求确定 |  | 2013-09-18 | 7 | 项目主管; 产品策划 | 40h |
| 10 | 2.2 | 相关业务后台研发 |  | 2013-09-24 | 9 | 后台工程师 | 168h |
| 11 | 2.3 | 竞技游戏房间列表设计 |  | 2013-09-24 | 9 | 2D平面设计师 | 24h |
| 12 | 2.4 | 竞技游戏房间设计 |  | 2013-09-27 | 11 | 2D平面设计师 | 40h |
| 13 | 2.5 | 游戏房间列表及房间相关研发 |  | 2013-09-24 | 9 | 2D研发工程师 | 168h |
| 14 | 2.6 | 3D模型和风格确定 |  | 2013-09-24 | 9 | 3D建模师; 3D贴图设计师 | 40h |
| 15 | 2.7 | 3D剩余模型建模 |  | 2013-09-27 | 14 | 3D建模师 | 120h |
| 16 | 2.8 | 3D剩余模型贴图 |  | 2013-09-27 | 14 | 3D贴图设计师 | 120h |
| 17 | 2.9 | 3D程序研发 |  | 2013-09-24 | 9 | 3D研发工程师 | 168h |
| 18 | 2.10 | 第二阶段完成 | milestone |  | 17 |  |  |
| 19 | 3 | **所有功能完成** |  |  |  |  |  |
| 20 | 3.1 | 产品原型及策划确定 |  | 2013-10-28 | 18 | 项目主管; 产品策划 | 40h |
| 21 | 3.2 | 相关业务后台研发 |  | 2013-10-31 | 20 | 后台工程师 | 160h |
| 22 | 3.3 | 游戏风格确定 |  | 2013-10-31 | 20 | 2D平面设计师; 2D动画制作师 | 40h |
| 23 | 3.4 | 游戏原画制作 |  | 2013-11-05 | 22 | 2D平面设计师 | 160h |
| 24 | 3.5 | 游戏动画制作 |  | 2013-11-05 | 22 | 2D动画制作师 | 160h |
| 25 | 3.6 | 2D游戏前端研发 |  | 2013-11-05 | 22 | 2D研发工程师 | 160h |
| 26 | 3.7 | 3D游戏与2D游戏衔接 |  | 2013-11-05 | 22 | 3D研发工程师 | 40h |
| 27 | 3.8 | 第三阶段完成 | milestone |  | 25 |  |  |

Notes:
- 2: 需要沟通确定
- 3: 需要沟通确定
- 6: 需要现有系统接口信息
- 7: Heiti SC / 12 / 9 / left-to-right / 20 / 36 / 交付：可注册、登陆、答题并与现有系统衔接上的网页应用
- 9: 需要沟通确定
- 11: 需要沟通确定
- 12: 需要沟通确定
- 14: 需要沟通确定
- 18: Heiti SC / 12 / 9 / left-to-right / 20 / 36 / 交付：完整的筹备模块 / 12 / 9 / left-to-right / 20 / 36 / +3D / Heiti SC / 12 / 9 / left-to-right / 20 / 36 / 模块相应功能的网页应用
- 20: 需沟通确定
- 27: Heiti SC / 12 / 9 / left-to-right / 20 / 36 / 交付：能完全满足所有需求的通过内部测试的网页应用

| ID | WBS | Task | Type | Start | Predecessors | Resources | Work |
| --- | --- | --- | --- | --- | --- | --- | --- |
| 28 | 4 | **项目验收** |  |  |  |  |  |
| 29 | 4.1 | 发布到真实系统环境 |  | 2013-12-03 | 27 | 运维工程师 | 40h |
| 30 | 4.2 | 系统全面测试及问题修复调整 |  |  | 29 |  | 80h |
| 31 | 4.3 | 第四阶段完成 | milestone |  | 30 |  |  |

Notes:
- 31: Heiti SC / 12 / 9 / left-to-right / 20 / 36 / 交付：真实环境的完成网页应用、相关源码及核心文档
